# Project Plan

Schedule from GanttProject, 2016-01-29 to 2016-03-03.

## Calendars

- Project calendar: Mon-Sun working.

## Resources

| Resource | Group |
| --- | --- |
| Jordan | Developer |
| Jack | Business Analyst/Tester |
| Majid | Tester/Systems Architect |
| Harry | Tester/Business Analyst |
| Carl | Developer |
| Matt | Business Analyst |
| Ibrahim | Systems Architect |
| Ahtif | Developer/Systems Architect |

## Schedule

| ID | WBS | Task | Type | Duration | Start | Finish | Predecessors | Complete | Resources |
| --- | --- | --- | --- | --- | --- | --- | --- | --- | --- |
| 1 | 1 | **Worksheet 1** |  | 11d | 2016-01-29 | 2016-02-08 |  | 94% |  |
| 2 | 1.1 | Initial meeting |  | 1d | 2016-01-29 | 2016-01-29 |  | 100% | Jordan [12.5%]; Jack [12.5%]; Majid [12.5%]; Harry [12.5%]; Carl [12.5%]; Matt [12.5%]; Ibrahim [12.5%]; Ahtif [12.5%] |
| 3 | 1.2 | Project Plan |  | 2d | 2016-02-05 | 2016-02-06 | 4FS+5d | 100% | Jordan [33%]; Jack [33%]; Majid [34%] |
| 4 | 1.3 | Role assignment |  | 1d | 2016-01-30 | 2016-01-30 |  | 100% |  |
| 5 | 1.4 | Role definition |  | 1d | 2016-02-07 | 2016-02-07 | 4FS+7d | 100% | Matt [50%]; Ibrahim [50%] |
| 6 | 1.5 | FDM Interview |  | 1d | 2016-02-02 | 2016-02-02 |  | 100% |  |
| 7 | 1.6 | Minutes of first meeting |  | 1d | 2016-02-06 | 2016-02-06 | 4FS+6d | 100% | Majid [34%]; Harry [33%]; Ahtif [33%] |
| 8 | 1.7 | Use case diagram |  | 2d | 2016-02-05 | 2016-02-06 | 4FS+5d | 100% | Carl |
| 9 | 1.8 | Software architecture and technology rationale |  | 1d | 2016-02-07 | 2016-02-07 | 4FS+7d | 100% | Harry [33%]; Carl [33%]; Ahtif [34%] |
| 10 | 1.9 | Project backlog |  | 3d | 2016-02-03 | 2016-02-05 | 4FS+3d | 100% | Majid [33%]; Harry [34%]; Ahtif [33%] |
| 11 | 1.10 | Risk assessment |  | 2d | 2016-02-06 | 2016-02-07 | 4FS+6d | 100% | Jordan [50%]; Jack [50%] |
| 12 | 1.11 | Project glossary |  | 2d | 2016-02-07 | 2016-02-08 | 3FF, 4FS+7d, 7FF, 8FF, 9FF, 10FF, 11FF | 100% | Carl [20%]; Matt [40%]; Ibrahim [40%] |
| 13 | 1.12 | Presentation - Wiki Pages |  | 1d | 2016-02-08 | 2016-02-08 | 4, 12FF | 100% | Jordan [12.5%]; Jack [12.5%]; Majid [12.5%]; Harry [12.5%]; Carl [12.5%]; Ibrahim [12.5%]; Ahtif [12.5%] |
| 14 | 1.13 | Finalise and submit WS1 | milestone | 0d | 2016-02-09 | 2016-02-09 | 13 |  |  |
| 15 | 2 | **Worksheet 2** |  | 23d | 2016-02-09 | 2016-03-02 | 1 | 82% |  |
| 16 | 2.1 | Meeting to organise worksheet 2 |  | 1d | 2016-02-10 | 2016-02-10 |  | 100% | Jack [12.5%]; Majid [12.5%]; Harry [12.5%]; Carl [12.5%]; Matt [12.5%]; Ibrahim [12.5%]; Ahtif [12.5%] |
| 17 | 2.2 | Minutes |  | 1d | 2016-02-11 | 2016-02-11 | 16 | 100% | Harry [10%] |
| 18 | 2.3 | **Sprint backlog** |  | 3d | 2016-02-09 | 2016-02-11 |  | 100% |  |
| 19 | 2.3.1 | Create Gherkin features |  | 3d | 2016-02-09 | 2016-02-11 |  | 100% | Jordan [80%] |
| 20 | 2.3.2 | Create detailed analysis object model |  | 3d | 2016-02-09 | 2016-02-11 |  | 100% | Harry [80%] |
| 21 | 2.4 | **Detailed software architecture** |  | 2d | 2016-02-09 | 2016-02-10 |  | 100% |  |
| 22 | 2.4.1 | Make the component diagram |  | 2d | 2016-02-09 | 2016-02-10 |  | 100% | Matt [75%] |
| 23 | 2.5 | **Detailed object design** |  | 6d | 2016-02-09 | 2016-02-14 |  | 100% |  |
| 24 | 2.5.1 | Security layer design |  | 2d | 2016-02-13 | 2016-02-14 |  | 100% | Jordan; Jack; Majid; Carl; Matt |
| 25 | 2.5.2 | Create data management strategy |  | 1d | 2016-02-12 | 2016-02-12 |  | 100% | Jordan; Jack [50%]; Majid; Matt; Ibrahim |
| 26 | 2.5.3 | Create object design model |  | 3d | 2016-02-09 | 2016-02-11 |  | 100% | Jordan [20%]; Jack [20%]; Majid [20%]; Matt [10%]; Ibrahim [20%] |

| ID | WBS | Task | Type | Duration | Start | Finish | Predecessors | Complete | Resources |
| --- | --- | --- | --- | --- | --- | --- | --- | --- | --- |
| 27 | 2.6 | **Detailed feature specification** |  | 3d | 2016-02-15 | 2016-02-17 |  | 100% |  |
| 28 | 2.6.1 | Feature specification for model layer |  | 3d | 2016-02-15 | 2016-02-17 |  | 100% | Majid [33%]; Matt [33%]; Ibrahim [33%] |
| 29 | 2.6.2 | Feature specification for controller layer |  | 3d | 2016-02-15 | 2016-02-17 |  | 100% | Majid [33%]; Matt [33%]; Ibrahim [33%] |
| 30 | 2.6.3 | Feature specification for security layer |  | 3d | 2016-02-15 | 2016-02-17 |  | 100% | Majid [33%]; Matt [33%]; Ibrahim [33%] |
| 31 | 2.7 | **Project plan** |  | 4d | 2016-02-09 | 2016-02-12 |  | 100% |  |
| 32 | 2.7.1 | Update Risk Assessment |  | 1d | 2016-02-12 | 2016-02-12 |  | 100% | Jack [50%] |
| 33 | 2.7.2 | Create test plan |  | 1d | 2016-02-11 | 2016-02-11 |  | 100% | Jack [80%] |
| 34 | 2.7.3 | Update Gantt chart for worksheet 2 |  | 1d | 2016-02-09 | 2016-02-09 |  | 100% | Jack [80%] |
| 35 | 2.7.4 | Create configuration management plan |  | 1d | 2016-02-10 | 2016-02-10 |  | 100% | Jack [67.5%] |
| 36 | 2.8 | **Prototype source code** |  | 16d | 2016-02-15 | 2016-03-01 | 23, 35FS+1d | 91% |  |
| 37 | 2.8.1 | Registration |  | 10d | 2016-02-15 | 2016-02-24 |  | 100% | Jordan [80%]; Carl [20%] |
| 38 | 2.8.2 | Messaging |  | 10d | 2016-02-20 | 2016-02-29 |  | 100% | Ahtif |
| 39 | 2.8.3 | Add Property Listings |  | 16d | 2016-02-15 | 2016-03-01 |  | 80% | Carl [80%] |
| 40 | 2.9 | **Step definitions** |  | 8d | 2016-02-24 | 2016-03-02 | 36FF | 50% |  |
| 41 | 2.9.1 | Step defs for security layer |  | 8d | 2016-02-24 | 2016-03-02 |  | 49% | Majid [33%]; Harry [33%] |
| 42 | 2.9.2 | Step defs for controller layer |  | 8d | 2016-02-24 | 2016-03-02 |  | 51% | Majid [33%]; Harry [33%] |
| 43 | 2.9.3 | Step defs for model layer |  | 8d | 2016-02-24 | 2016-03-02 |  | 52% | Majid [33%]; Harry [33%] |
| 44 | 2.10 | Prototype complete | milestone | 0d | 2016-03-02 | 2016-03-02 | 36 |  |  |
| 45 | 2.11 | Testing complete | milestone | 0d | 2016-03-03 | 2016-03-03 | 40 |  |  |
| 46 | 2.12 | Finalise and submit WS2 | milestone | 0d | 2016-03-03 | 2016-03-03 | 18, 21, 23, 27, 31, 44FS+1d |  |  |
